# caMOD 2.2

Schedule from MS Project, 2007-02-15 to 2008-04-07, A marks actual dates.
SAIC

## Calendars

- Standard: Mon-Fri 08:00-12:00, 13:00-17:00; Sat-Sun off. Exceptions (off unless hours are given): 2007-05-28.

## Resources

| Resource |
| --- |
| GuruswamiS |
| NCICB |
| Anand |
| Ulli |
| QA |
| Sima |
| DBA |
| 2nd Resource |
| Sima |
| Srini |
| Grid Resource |
| App Support |
| Systems |
| Jill |

## Schedule

| ID | WBS | Task | Type | Duration | Start | Finish | Predecessors | Complete | Remaining | Total slack | Free slack | Resources | Work | Actual work |
| --- | --- | --- | --- | --- | --- | --- | --- | --- | --- | --- | --- | --- | --- | --- |
| 1 | 1 | **caMOD 2.3 Release** |  | 149d | 2007-02-15 A | 2007-09-12 |  | 88% | 18.62d | 148d |  |  | 2508h | 2084h |
| 2 | 1.1 | **Inception Phase** |  | 17d | 2007-02-15 A | 2007-03-09 |  | 97% | 0.45d | 280d |  |  | 152h | 148h |
| 3 | 1.1.1 | **Requirements Gathering** |  | 2d | 2007-02-15 A | 2007-02-16 A |  | 100% |  |  |  |  | 16h | 16h |
| 4 | 1.1.1.1 | Determine Basic Use Cases |  | 1d | 2007-02-15 A | 2007-02-15 A |  | 100% |  |  |  | NCICB | 8h | 8h |
| 5 | 1.1.1.2 | Prioritize Use Cases |  | 1d | 2007-02-16 A | 2007-02-16 A | 4 | 100% |  |  |  | NCICB | 8h | 8h |
| 6 | 1.1.2 | **Documentation** |  | 15d | 2007-02-19 A | 2007-03-09 |  | 97% | 0.44d | 280d |  |  | 136h | 132h |
| 7 | 1.1.2.1 | Draft Requirements Specification Document |  | 1w | 2007-02-19 A | 2007-02-23 A | 5 | 100% |  |  |  | Sima | 40h | 40h |
| 8 | 1.1.2.2 | Draft Test Plan |  | 1w | 2007-02-26 A | 2007-03-02 A | 7 | 100% |  |  |  | QA | 40h | 40h |
| 9 | 1.1.2.3 | Draft Test Cases |  | 1w | 2007-03-05 A | 2007-03-09 A | 8 | 100% |  |  |  | QA | 40h | 40h |
| 10 | 1.1.2.4 | Update Project Plan |  | 2d | 2007-02-26 A | 2007-02-27 | 7 | 75% | 0.5d | 288d | 0d | Srini | 16h | 12h |
| 11 | 1.1.3 | Milestone: General Requirements Captured & Priortized | milestone | 0d | 2007-02-27 | 2007-02-27 | 10 |  |  | 287d | 0d | Anand |  |  |
| 12 | 1.2 | **Elaboration Phase** |  | 116d | 2007-02-27 A | 2007-08-09 A |  | 100% |  |  |  |  | 1124h | 1124h |
| 13 | 1.2.1 | **Design / Architecture** |  | 116d | 2007-02-27 A | 2007-08-09 A |  | 100% |  |  |  |  | 984h | 984h |
| 14 | 1.2.1.1 | Review with Development Team | milestone | 0d | 2007-02-27 A | 2007-02-27 A | 11 | 100% |  |  |  | Sima |  |  |
| 15 | 1.2.1.2 | Incorporate Comments/Feedback from the team review |  | 1d | 2007-02-28 A | 2007-02-28 A | 14 | 100% |  |  |  | Sima | 8h | 8h |
| 16 | 1.2.1.3 | Draft design document (caBIG template) |  | 3d | 2007-03-08 A | 2007-03-12 A | 15 | 100% |  |  |  | Sima | 24h | 24h |
| 17 | 1.2.1.4 | Milestone: Completed Design document | milestone | 0d | 2007-03-12 A | 2007-03-12 A | 16 | 100% |  |  |  | Anand |  |  |
| 18 | 1.2.1.5 | Incorporate changes to the Object Model |  | 2d | 2007-03-13 A | 2007-03-14 A | 16 | 100% |  |  |  | Sima | 16h | 16h |
| 19 | 1.2.1.6 | Milestone: Soft Freeze Object Model | milestone | 0d | 2007-03-14 A | 2007-03-14 A | 18 | 100% |  |  |  |  |  |  |
| 20 | 1.2.1.7 | Round Trip, Import XMI into EA |  | 2w | 2007-03-15 A | 2007-03-28 A |  | 100% |  |  |  | Ulli | 80h | 80h |
| 21 | 1.2.1.8 | Update EA according to VCDE responses- Resubmit |  | 20w | 2007-03-08 A | 2007-07-26 A | 27 | 100% |  |  |  | Ulli | 776h | 776h |
| 22 | 1.2.1.9 | Register Model in caDSR |  | 2w | 2007-07-27 A | 2007-08-09 A | 21 | 100% |  |  |  | App Support | 80h | 80h |
| 23 | 1.2.2 | **Database Cleanup** |  | 32d | 2007-03-05 A | 2007-04-17 A | 10 | 100% |  |  |  |  | 36h | 36h |
| 24 | 1.2.2.1 | Data Issue - current genetic background |  | 1d | 2007-04-12 A | 2007-04-12 A | 20FS+2w | 100% |  |  |  | Ulli | 8h | 8h |
| 25 | 1.2.2.2 | Data Issue - review and if reasonable delete all records that have been in the incomplete state for more than 2 years |  | 3d | 2007-04-13 A | 2007-04-17 A | 24 | 100% |  |  |  | Ulli | 4h | 4h |
| 26 | 1.2.2.3 | Data - inactivate screened-rejected records submitted by intramural researchers |  | 2d | 2007-03-05 A | 2007-03-06 A | 25 | 100% |  |  |  | Ulli | 16h | 16h |
| 27 | 1.2.2.4 | Clean up files |  | 1d | 2007-03-07 A | 2007-03-07 A | 26 | 100% |  |  |  | Ulli | 8h | 8h |
| 28 | 1.2.3 | Show species specific anatomy vocabularies - EVSTree changes |  | 13d | 2007-03-15 A | 2007-04-02 A | 18 | 100% |  |  |  | Sima | 64h | 64h |
| 29 | 1.2.4 | Move caMOD to Gforge |  | 1w | 2007-04-19 A | 2007-04-25 A | 27FS+6w | 100% |  |  |  | Ulli [50%]; Sima [50%] | 40h | 40h |

| ID | WBS | Task | Type | Duration | Start | Finish | Predecessors | Complete | Remaining | Total slack | Free slack | Resources | Work | Actual work |
| --- | --- | --- | --- | --- | --- | --- | --- | --- | --- | --- | --- | --- | --- | --- |
| 30 | 1.3 | **Construction Phase** |  | 99d | 2007-04-03 A | 2007-08-20 | 28 | 90% | 9.56d | 28d |  |  | 920h | 812h |
| 31 | 1.3.1 | **iteration 1: ZEBRAFISH Specific Support in caMOD** |  | 62d | 2007-04-03 A | 2007-06-28 A |  | 100% |  |  |  |  | 352h | 352h |
| 32 | 1.3.1.1 | Add age drop down list to model characteristics submission and search page |  | 8d | 2007-04-03 A | 2007-04-12 A |  | 100% |  |  |  | Sima | 24h | 24h |
| 33 | 1.3.1.2 | Add drop down list for Site to morpholino submission and search page |  | 8d | 2007-04-13 A | 2007-04-24 A | 32 | 100% |  |  |  | Sima | 24h | 24h |
| 34 | 1.3.1.3 | Add drop down list for delivery method to morpholino submission and search page |  | 3d | 2007-04-25 A | 2007-04-27 A | 33 | 100% |  |  |  | Sima | 24h | 24h |
| 35 | 1.3.1.4 | Modify histopathology page - make diagnosis field free text or used Hatem's list |  | 2w | 2007-04-30 A | 2007-05-11 A | 34 | 100% |  |  |  | Sima | 40h | 40h |
| 36 | 1.3.1.5 | Modify availability pages - add page for zfin, keep investigator page |  | 3d | 2007-05-14 A | 2007-05-16 A | 35 | 100% |  |  |  | Sima | 24h | 24h |
| 37 | 1.3.1.6 | Modify genetic description pages - link to zfin.org for allele details |  | 3d | 2007-05-17 A | 2007-05-21 A | 36 | 100% |  |  |  | Sima | 24h | 24h |
| 38 | 1.3.1.7 | Add conditioning regimen dropdown to xenograft page |  | 3d | 2007-05-22 A | 2007-05-24 A | 37 | 100% |  |  |  | Sima | 24h | 24h |
| 39 | 1.3.1.8 | Add "small molecules" to chemical class list on therapy submission page |  | 1d | 2007-05-25 A | 2007-05-25 A | 38 | 100% |  |  |  | Sima | 8h | 8h |
| 40 | 1.3.1.9 | Modify therapy page - add drop down list for developmental stage |  | 3d | 2007-05-29 A | 2007-05-31 A | 39 | 100% |  |  |  | Sima | 24h | 24h |
| 41 | 1.3.1.10 | ZEBRAFISH - anatomy vocabulary for histopathology page |  | 2d | 2007-06-01 A | 2007-06-04 A | 40 | 100% |  |  |  | Sima | 16h | 16h |
| 42 | 1.3.1.11 | **Test** |  | 18d | 2007-06-05 A | 2007-06-28 A | 40 | 100% |  |  |  |  | 120h | 120h |
| 43 | 1.3.1.11.1 | Deploy iteration on DEV Server |  | 1d | 2007-06-05 A | 2007-06-05 A | 41 | 100% |  |  |  | Sima | 8h | 8h |
| 44 | 1.3.1.11.2 | Test on DEV tier |  | 1w | 2007-06-11 A | 2007-06-15 A | 43FS+3d | 100% |  |  |  | Ulli | 40h | 40h |
| 45 | 1.3.1.11.3 | Deploy iteration on QA Server |  | 1d | 2007-06-18 A | 2007-06-18 A | 44 | 100% |  |  |  | QA | 8h | 8h |
| 46 | 1.3.1.11.4 | Test on QA |  | 1w | 2007-06-19 A | 2007-06-25 A | 45 | 100% |  |  |  | QA | 40h | 40h |
| 47 | 1.3.1.11.5 | Deploy iteration on Staging Server |  | 3d | 2007-06-26 A | 2007-06-28 A | 46 | 100% |  |  |  | Systems | 24h | 24h |
| 48 | 1.3.1.11.6 | Milestone: ZebraFish feature available on the staging Tier | milestone | 0d | 2007-06-28 A | 2007-06-28 A | 47 | 100% |  |  |  |  |  |  |
| 49 | 1.3.2 | **Iteration 2: Bug fixes & usability enhancements** |  | 42d | 2007-06-22 A | 2007-08-20 |  | 77% | 9.75d | 28d |  |  | 568h | 460h |
| 50 | 1.3.2.1 | Update online help |  | 1w | 2007-06-22 A | 2007-06-28 A | 48 | 100% |  |  |  | Jill | 40h | 40h |
| 51 | 1.3.2.2 | Incorporate online help changes to the webApp |  | 2d | 2007-06-29 A | 2007-07-02 A | 50 | 100% |  |  |  | Sima | 16h | 16h |
| 53 | 1.3.2.3 | **Search Features** |  | 24d | 2007-07-03 A | 2007-08-03 |  | 84% | 3.75d | 33d | 5d | Sima | 384h | 324h |
| 54 | 1.3.2.3.1 | Customizing search results doesn't work when carcinogen is selected |  | 1w | 2007-07-03 A | 2007-07-09 A | 51 | 100% |  |  |  | Sima | 40h | 40h |
| 55 | 1.3.2.3.2 | Adv search for carcinogens does not include data from Jackson Lab |  | 1w | 2007-07-10 A | 2007-07-16 A | 54 | 100% |  |  |  | Sima | 40h | 40h |
| 56 | 1.3.2.3.3 | Fix Jax lab availability link and data |  | 1d | 2007-07-17 A | 2007-07-17 A | 55 | 100% |  |  |  | Sima | 8h | 8h |
| 57 | 1.3.2.3.4 | Fix MGI link on genetic description pages and at the same time fix existing data |  | 3d | 2007-07-18 A | 2007-07-20 A | 56 | 100% |  |  |  | Sima | 24h | 24h |
| 58 | 1.3.2.3.5 | Fix model records with missing PI |  | 2d | 2007-07-23 A | 2007-07-24 A | 57 | 100% |  |  |  | Sima | 16h | 16h |
| 59 | 1.3.2.3.6 | MTB radiation data are not shown |  | 2d | 2007-07-25 A | 2007-07-26 A | 58 | 100% |  |  |  | Sima | 16h | 16h |
| 60 | 1.3.2.3.7 | Admin pages need additional filters |  | 3d | 2007-07-27 A | 2007-07-31 | 59 | 75% | 0.75d | 33d | 0d | Sima | 24h | 18h |
| 61 | 1.3.2.3.8 | Upgrade to Jboss 4.0.5 and Ant 1.6 (tech stack requirement) |  | 3d | 2007-08-01 | 2007-08-03 | 60 |  |  | 33d |  | Sima | 24h |  |

| ID | WBS | Task | Type | Duration | Start | Finish | Predecessors | Complete | Remaining | Total slack | Free slack | Resources | Work | Actual work |
| --- | --- | --- | --- | --- | --- | --- | --- | --- | --- | --- | --- | --- | --- | --- |
| 62 | 1.3.2.4 | **Submission Features** |  | 5d | 2007-08-06 A | 2007-08-10 A |  | 100% |  |  |  | Sima | 80h | 80h |
| 63 | 1.3.2.4.1 | Can not delete genotype on model char submission page |  | 2d | 2007-08-06 A | 2007-08-07 A | 61 | 100% |  |  |  | Sima | 16h | 16h |
| 64 | 1.3.2.4.2 | Nomenclature submssion field adds data when model is edited |  | 3d | 2007-08-08 A | 2007-08-10 A | 63 | 100% |  |  |  | Sima | 24h | 24h |
| 65 | 1.3.2.5 | **Test** |  | 6d | 2007-08-13 | 2007-08-20 |  |  |  | 28d |  |  | 48h |  |
| 66 | 1.3.2.5.1 | Deploy iteration on DEV Server |  | 1d | 2007-08-13 | 2007-08-13 | 53, 62 |  |  | 30d | 0d | Sima | 8h |  |
| 67 | 1.3.2.5.2 | Test on DEV tier |  | 5d | 2007-08-14 | 2007-08-20 | 66 |  |  | 28d | 0d | Ulli | 40h |  |
| 68 | 1.4 | **Transition Phase** |  | 57d | 2007-06-26 | 2007-09-12 |  |  |  | 68d |  |  | 312h |  |
| 69 | 1.4.1 | **QA** |  | 10d | 2007-06-26 | 2007-07-09 |  |  |  | 195d |  | QA | 160h |  |
| 70 | 1.4.1.1 | Finalize Testplan |  | 1w | 2007-06-26 | 2007-07-02 | 46 |  |  | 195d | 0d | QA | 40h |  |
| 71 | 1.4.1.2 | Finalize Test Cases |  | 1w | 2007-07-03 | 2007-07-09 | 70 |  |  | 195d |  | QA | 40h |  |
| 72 | 1.4.2 | **Deploy** |  | 17d | 2007-08-21 | 2007-09-12 | 67 |  |  | 28d |  |  | 152h |  |
| 73 | 1.4.2.1 | **QA Server Deployment** |  | 10d | 2007-08-21 | 2007-09-03 |  |  |  | 28d |  |  | 80h |  |
| 74 | 1.4.2.1.1 | QA Testing |  | 2w | 2007-08-21 | 2007-09-03 |  |  |  | 28d | 0d | QA | 80h |  |
| 75 | 1.4.2.2 | **Staging Server Deployment** |  | 5d | 2007-09-04 | 2007-09-10 |  |  |  | 28d |  |  | 40h |  |
| 76 | 1.4.2.2.1 | Staging Testing |  | 1w | 2007-09-04 | 2007-09-10 | 74 |  |  | 28d | 0d | Ulli | 40h |  |
| 77 | 1.4.2.3 | **Production Server Deployment** |  | 2d | 2007-09-11 | 2007-09-12 |  |  |  | 28d |  | Sima | 32h |  |
| 78 | 1.4.2.3.1 | Production Verification |  | 2d | 2007-09-11 | 2007-09-12 | 76 |  |  | 28d | 0d | Ulli | 16h |  |
| 79 | 1.5 | caMOD 2.3 - Closeout | milestone | 0d | 2007-09-12 | 2007-09-12 | 78 |  |  | 148d |  |  |  |  |
| 80 | 2 | **caMOD 2.4 Release** |  | 148d | 2007-09-13 A | 2008-04-07 | 78 | 11% | 131.41d | 0d |  |  | 2368h | 355.45h |
| 81 | 2.1 | **Architecture and Design** |  | 16d | 2007-09-13 | 2007-10-04 |  |  |  | 28d |  |  | 48h |  |
| 82 | 2.1.1 | Use Case and Design Doc (caBIG template) |  | 2w | 2007-09-13 | 2007-09-26 |  |  |  | 28d | 0d | 2nd Resource | 40h |  |
| 83 | 2.1.2 | Review use cases / design with the "Review Board" |  | 6d | 2007-09-27 | 2007-10-04 | 82 |  |  | 132d |  | 2nd Resource | 8h |  |
| 84 | 2.2 | **iteration 1: Admin Features & misc. enhancements** |  | 35d | 2007-09-27 | 2007-11-14 |  |  |  | 28d |  |  | 280h |  |
| 85 | 2.2.1 | Admin Section Needs Additional Filters |  | 2w | 2007-09-27 | 2007-10-10 | 82 |  |  | 28d | 0d | Sima | 80h |  |
| 86 | 2.2.2 | Admin - comments made by admin people need to be shown |  | 1w | 2007-10-11 | 2007-10-17 | 85 |  |  | 28d | 0d | Sima | 40h |  |
| 87 | 2.2.3 | Admin - Coordinator needs to see what models have been assigned to what editor or screener |  | 1w | 2007-10-18 | 2007-10-24 | 86 |  |  | 28d | 0d | Sima | 40h |  |
| 88 | 2.2.4 | Use improved PubMed fetch script on publication submission page |  | 3d | 2007-10-25 | 2007-10-29 | 87 |  |  | 28d | 0d | Sima | 24h |  |
| 89 | 2.2.5 | Do not delete EnvironmentalFactor objects - instead reuse and leave in DB |  | 2d | 2007-10-30 | 2007-10-31 | 88 |  |  | 28d | 0d | Sima | 16h |  |
| 90 | 2.2.6 | Upgrade to a new version of struts |  | 1w | 2007-11-01 | 2007-11-07 | 89 |  |  | 28d | 0d | Sima | 40h |  |
| 91 | 2.2.7 | Configure our app to use a JNDI data source |  | 1w | 2007-11-08 | 2007-11-14 | 90 |  |  | 28d | 0d | Sima | 40h |  |

| ID | WBS | Task | Duration | Start | Finish | Predecessors | Complete | Remaining | Total slack | Free slack | Resources | Work | Actual work |
| --- | --- | --- | --- | --- | --- | --- | --- | --- | --- | --- | --- | --- | --- |
| 92 | 2.3 | **Iteration 2: EVS & caGrid Support** | 86d | 2007-11-15 A | 2008-03-13 | 91 | 17% | 71.17d | 0d |  |  | 1728h | 355.45h |
| 93 | 2.3.1 | **EVSTree** | 86d | 2007-11-15 A | 2008-03-13 |  | 28% | 61.57d | 0d |  | Sima | 1272h | 355.45h |
| 94 | 2.3.1.1 | **Implementation and Testing** | 86d | 2007-11-15 A | 2008-03-13 |  | 28% | 61.57d | 0d |  |  | 584h | 160h |
| 95 | 2.3.1.1.1 | Restore the association between organ and diagnosis | 2w | 2007-11-15 | 2007-11-28 |  |  |  | 56d | 0d | Sima | 80h |  |
| 96 | 2.3.1.1.2 | Show species specific anatomy vocabularies | 4w | 2007-11-29 | 2007-12-26 | 95 |  |  | 56d |  | Sima [75%] | 120h |  |
| 97 | 2.3.1.1.3 | Utilize the staining vocabulary | 3w | 2007-12-25 A | 2008-01-14 A | 96 | 100% |  |  |  | Sima [66.7%] | 80h | 80h |
| 98 | 2.3.1.1.4 | Annoyances with EVS organ tree | 5w | 2008-01-15 | 2008-02-18 | 97 |  |  | 18d |  | Sima [80%] | 160h |  |
| 99 | 2.3.1.1.5 | Use mouse and rat strains from NCI Thesaurus | 2w | 2008-02-19 A | 2008-03-03 A | 98 | 100% |  |  |  | Sima | 80h | 80h |
| 100 | 2.3.1.1.6 | Selecting search results in tree causes HTTP 404 Error | 3d | 2008-03-04 | 2008-03-06 | 99 |  |  | 0d |  | Sima | 24h |  |
| 101 | 2.3.1.1.7 | Crash - when trying to select search result page crashes | 1w | 2008-03-07 | 2008-03-13 | 100 |  |  | 0d |  | Sima | 40h |  |
| 102 | 2.3.2 | **Remote API / Grid** | 40d | 2007-11-15 | 2008-01-09 | 7 |  |  | 34d |  |  | 320h |  |
| 103 | 2.3.2.1 | Leverage caCORE 3.2 for remote API | 1w | 2007-11-15 | 2007-11-21 |  |  |  | 34d | 0d | Sima | 40h |  |
| 104 | 2.3.2.2 | Remote API - Upgrade to 1.0 of Tool Kit | 1w | 2007-11-22 | 2007-11-28 | 103 |  |  | 34d | 0d | Sima | 40h |  |
| 105 | 2.3.2.3 | Make caMod available in the grid (production) | 1w | 2007-11-29 | 2007-12-05 | 104 |  |  | 34d | 0d | Sima | 40h |  |
| 106 | 2.3.2.4 | Map API to latest OM (2.2) | 2w | 2007-12-06 | 2007-12-19 | 105 |  |  | 34d | 0d | Sima | 80h |  |
| 107 | 2.3.2.5 | Make only edited-approved models available through API | 3w | 2007-12-20 | 2008-01-09 | 106 |  |  | 34d | 0d | Sima | 120h |  |
| 108 | 2.3.3 | **Configuration Tasks** | 5d | 2007-11-15 | 2007-11-21 |  |  |  | 81d |  |  | 40h |  |
| 109 | 2.3.3.1 | Create automated deployment enviroment on dev server | 1w | 2007-11-15 | 2007-11-21 |  |  |  | 81d |  | Sima | 40h |  |
| 110 | 2.3.4 | **EVSTree - caMOD-side work** | 12d | 2008-01-10 | 2008-01-25 | 107 |  |  | 34d |  |  | 96h |  |
| 111 | 2.3.4.1 | Show species specific anatomy vocabularies (caMOD changes) | 4d | 2008-01-10 | 2008-01-15 |  |  |  | 34d | 0d | Sima | 32h |  |
| 112 | 2.3.4.2 | Utilize the staining vocabulary (caMOD changes) | 4d | 2008-01-16 | 2008-01-21 | 111 |  |  | 34d | 0d | Sima | 32h |  |
| 113 | 2.3.4.3 | Use mouse and rat strains from NCI Thesaurus (caMOD changes) | 4d | 2008-01-22 | 2008-01-25 | 112 |  |  | 34d |  | Sima | 32h |  |
| 114 | 2.4 | **Transition Phase** | 108d | 2007-11-08 | 2008-04-07 |  |  |  | 0d |  |  | 312h |  |
| 115 | 2.4.1 | **QA** | 10d | 2007-11-08 | 2007-11-21 |  |  |  | 98d |  | QA | 160h |  |
| 116 | 2.4.1.1 | Finalize Testplan | 1w | 2007-11-08 | 2007-11-14 | 90 |  |  | 98d | 0d | QA | 40h |  |
| 117 | 2.4.1.2 | Finalize Test Cases | 1w | 2007-11-15 | 2007-11-21 | 116 |  |  | 98d |  | QA | 40h |  |

| ID | WBS | Task | Type | Duration | Start | Finish | Predecessors | Total slack | Resources | Work |
| --- | --- | --- | --- | --- | --- | --- | --- | --- | --- | --- |
| 118 | 2.4.2 | **Deploy** |  | 17d | 2008-03-14 | 2008-04-07 |  | 0d |  | 152h |
| 119 | 2.4.2.1 | **QA Server Deployment** |  | 10d | 2008-03-14 | 2008-03-27 |  | 0d |  | 80h |
| 120 | 2.4.2.1.1 | QA Testing |  | 2w | 2008-03-14 | 2008-03-27 | 92 | 0d | QA | 80h |
| 121 | 2.4.2.2 | **Staging Server Deployment** |  | 5d | 2008-03-28 | 2008-04-03 |  | 0d |  | 40h |
| 122 | 2.4.2.2.1 | Staging Testing |  | 1w | 2008-03-28 | 2008-04-03 | 120 | 0d | Ulli | 40h |
| 123 | 2.4.2.3 | **Production Server Deployment** |  | 2d | 2008-04-04 | 2008-04-07 |  | 0d | Sima | 32h |
| 124 | 2.4.2.3.1 | Production Verification |  | 2d | 2008-04-04 | 2008-04-07 | 122 | 0d | Ulli | 16h |
| 125 | 2.5 | caMOD 2.4 - Closeout | milestone | 0d | 2008-04-07 | 2008-04-07 | 124 | 0d |  |  |
