# camod Release 2.5.1

Schedule from MS Project, 2009-01-05 to 2009-06-18, A marks actual dates.
NCI

## Calendars

- Standard: Mon-Fri 08:00-12:00, 13:00-17:00; Sat-Sun off.

## Resources

| Resource |
| --- |
| Sima |
| Ulli |
| Juli |
| Maki |
| Kavitha |
| QA |
| Jill |
| Security Team |
| Systems |
| Lalitha |

## Schedule

| ID | WBS | Task | Type | Duration | Start | Finish | Predecessors | Complete | Remaining | Total slack | Free slack | Constraint | Resources | Work | Actual work |
| --- | --- | --- | --- | --- | --- | --- | --- | --- | --- | --- | --- | --- | --- | --- | --- |
| 1 | 1 | **caMOD 2.5.1 Release** |  | 119d? | 2009-01-05 A | 2009-06-18 |  | 66% | 40.55d? | 0d |  |  |  | 1928h | 1276h |
| 2 | 1.1 | **Inception Phase** |  | 17d | 2009-01-05 A | 2009-01-27 A |  | 100% |  |  |  |  |  | 280h | 280h |
| 3 | 1.1.1 | Scope 2.5.1 Release |  | 12d | 2009-01-05 A | 2009-01-21 A |  | 100% |  |  |  | start no earlier than 2009-01-05 | Sima; Ulli | 184h | 184h |
| 4 | 1.1.2 | Schedule 2.5.1 Release |  | 4d | 2009-01-22 A | 2009-01-27 A | 3 | 100% |  |  |  | start no earlier than 2009-01-13 | Sima; Maki; Ulli | 96h | 96h |
| 5 | 1.1.3 | Milestone: Inception Completed | milestone | 0d | 2009-01-27 A | 2009-01-27 A | 4 | 100% |  |  |  |  |  |  |  |
| 6 | 1.2 | **Elaboration Phase** |  | 10d | 2009-02-02 A | 2009-02-13 | 5 | 70% | 3d | 27.57d | 1d |  |  | 128h | 56h |
| 7 | 1.2.1 | Use Case and Design Doc (caBIG template) |  | 7d | 2009-02-02 A | 2009-02-10 A |  | 100% |  |  |  | start no earlier than 2009-02-02 | Sima | 56h | 56h |
| 8 | 1.2.2 | Review use cases / design with the "Review Board" |  | 3d | 2009-02-11 | 2009-02-13 | 7 |  |  | 25.64d | 0d | finish no earlier than 2009-01-27 | Juli; Maki; Ulli | 72h |  |
| 9 | 1.2.3 | Milestone: Elaboration Completed | milestone | 0d | 2009-02-13 | 2009-02-13 | 7, 8 |  |  | 1d |  |  |  |  |  |
| 10 | 1.3 | **Construction Phase** |  | 74d? | 2009-02-17 A | 2009-05-29 | 6 | 83% | 12.74d? | 14d |  |  |  | 1192h | 940h |
| 11 | 1.3.1 | **Iteration 1** |  | 10d | 2009-02-17 A | 2009-03-02 A |  | 100% |  |  |  |  |  | 80h | 80h |
| 12 | 1.3.1.1 | **caMOD - Cancer Models Database - Feature Requests** |  | 10d | 2009-02-17 A | 2009-03-02 A |  | 100% |  |  |  |  |  | 80h | 80h |
| 13 | 1.3.1.1.1 | 4772-Make caMod available in the grid using newest technology |  | 10d | 2009-02-17 A | 2009-03-02 A |  | 100% |  |  |  |  | Sima | 80h | 80h |
| 14 | 1.3.1.2 | Milestone: Iteration 1 Completed | milestone | 0d | 2009-03-02 A | 2009-03-02 A | 12 | 100% |  |  |  |  |  |  |  |
| 15 | 1.3.2 | **Iteration 2** |  | 42d? | 2009-03-03 A | 2009-04-29 | 11 | 82% | 7.42d? | 14.14d | 0d |  |  | 848h | 676h |
| 16 | 1.3.2.1 | **caMOD - Cancer Models Database - Feature Requests** |  | 11d | 2009-03-03 A | 2009-03-17 A |  | 100% |  |  |  |  |  | 88h | 88h |
| 17 | 1.3.2.1.1 | 17040-Make PMID field on advanced search page userfriendlier by adding a link to PubMed and trim functions |  | 1d | 2009-03-03 A | 2009-03-03 A |  | 100% |  |  |  |  | Sima | 8h | 8h |
| 18 | 1.3.2.1.2 | 17325-Upgrade caMOD to use caBIO 4.x to get data |  | 10d | 2009-03-04 A | 2009-03-17 A | 17 | 100% |  |  |  |  | Sima | 80h | 80h |
| 19 | 1.3.2.2 | **caMOD - Cancer Models Database - Bugs** |  | 21d? | 2009-03-18 A | 2009-04-15 A | 16 | 100% |  |  |  |  |  | 152h | 152h |
| 20 | 1.3.2.2.1 | 17833-Make sure all references to Tranplantation are properly named |  | 5d | 2009-03-18 A | 2009-03-24 A |  | 100% |  |  |  |  | Sima | 40h | 40h |
| 21 | 1.3.2.2.2 | 18717-Sort therapies in the order they are entered |  | 3d | 2009-03-25 A | 2009-03-27 A | 20 | 100% |  |  |  |  | Sima | 24h | 24h |
| 22 | 1.3.2.2.3 | 18694-Correct the spelling of Motility on Therapy/Biological Process page |  | 1d | 2009-03-30 A | 2009-03-30 A | 21 | 100% |  |  |  |  | Sima | 8h | 8h |
| 23 | 1.3.2.2.4 | 18267-No other zebrafish diagnosis shown on search page |  | 1d | 2009-03-31 A | 2009-03-31 A | 22 | 100% |  |  |  |  | Sima | 8h | 8h |
| 24 | 1.3.2.2.5 | 17320-Make sure all filed sizes in database are validated correctly in validation.xml |  | 5d | 2009-04-01 A | 2009-04-07 A | 23 | 100% |  |  |  |  | Sima | 40h | 40h |
| 25 | 1.3.2.2.6 | 12483-Why does unpublished entry not show up on publication, cell lines, or therapeutic approaches search screen |  | 1d | 2009-04-08 A | 2009-04-08 A | 24 | 100% |  |  |  |  | Sima | 8h | 8h |
| 26 | 1.3.2.2.7 | 11623-Construct sequence field on genetic description pages is independent of image submission |  | 2d | 2009-04-09 A | 2009-04-10 A | 25 | 100% |  |  |  |  | Sima | 16h | 16h |
| 27 | 1.3.2.2.8 | 5235-amount of cells on Transplantation needs to accept 10^6 instead of a number (validation) |  | 1d | 2009-04-13 A | 2009-04-13 A | 26 | 100% |  |  |  |  | Sima | 8h | 8h |
| 28 | 1.3.2.2.9 | 19205-Sort therapies in the order they are entered |  | 1d? | 2009-04-14 A | 2009-04-14 A | 27 | 100% |  |  |  |  |  |  |  |
| 29 | 1.3.2.2.10 | 19758-Remove the filter from the PI drop-down list on admin (Edit Models) search criteria screen |  | 1d? | 2009-04-15 A | 2009-04-15 A | 28 | 100% |  |  |  |  |  |  |  |

| ID | WBS | Task | Type | Duration | Start | Finish | Predecessors | Complete | Remaining | Total slack | Free slack | Resources | Work | Actual work |
| --- | --- | --- | --- | --- | --- | --- | --- | --- | --- | --- | --- | --- | --- | --- |
| 30 | 1.3.2.3 | **caMOD - Data and Review** |  | 37d | 2009-03-03 A | 2009-04-22 |  | 65% | 12.9d | 1.25d | 0d |  | 568h | 396h |
| 31 | 1.3.2.3.1 | 18803-MTB data set deployment |  | 5d | 2009-04-16 | 2009-04-22 | 19 |  |  | 8.54d |  | Sima | 40h |  |
| 32 | 1.3.2.3.2 | 18803-Import new MTB data set |  | 33d | 2009-03-03 A | 2009-04-16 |  | 75% | 8.25d | 5.25d |  | Ulli; Lalitha | 528h | 396h |
| 33 | 1.3.2.4 | **EVS Tree** |  | 5d | 2009-04-23 A | 2009-04-29 A | 30 | 100% |  |  |  |  | 40h | 40h |
| 34 | 1.3.2.4.1 | 10957-Implement connection to EVS 4.x (Lexbig Vocabuarly System / Architecture) |  | 5d | 2009-04-23 A | 2009-04-29 A |  | 100% |  |  |  | Sima | 40h | 40h |
| 35 | 1.3.2.5 | Milestone: Iteration 2 Completed | milestone | 0d | 2009-04-29 | 2009-04-29 | 16, 33, 19, 30 |  |  | 11.79d | 0d |  |  |  |
| 36 | 1.3.3 | **Testing** |  | 22d | 2009-04-30 A | 2009-05-29 | 11, 15 | 76% | 5.24d | 0d |  |  | 264h | 184h |
| 37 | 1.3.3.1 | Update test cases |  | 9d | 2009-04-30 A | 2009-05-12 A | 19, 32 | 100% |  |  |  | Sima; Ulli | 88h | 88h |
| 38 | 1.3.3.2 | Deploy iteration on DEV Server |  | 2d | 2009-05-13 A | 2009-05-14 A | 37 | 100% |  |  |  | Sima | 16h | 16h |
| 39 | 1.3.3.3 | Test on DEV tier |  | 10d | 2009-05-15 A | 2009-05-29 | 38 | 50% | 5d | 0d |  | Sima; Ulli | 160h | 80h |
| 40 | 1.3.4 | Milestone: Construction Completed | milestone | 0d | 2009-05-29 | 2009-05-29 | 36 |  |  | 14d |  |  |  |  |
| 41 | 1.4 | **Transition Phase** |  | 36d | 2009-04-30 | 2009-06-18 | 35 |  |  | 0d |  |  | 328h |  |
| 42 | 1.4.1 | **QA** |  | 6d | 2009-04-30 | 2009-05-07 |  |  |  | 16d | 0d |  | 48h |  |
| 43 | 1.4.1.1 | Finalize Testplan |  | 3d | 2009-04-30 | 2009-05-04 | 35 |  |  | 16d | 0d | QA | 24h |  |
| 44 | 1.4.1.2 | Finalize Test Cases |  | 3d | 2009-05-05 | 2009-05-07 | 43 |  |  | 16d |  | QA | 24h |  |
| 45 | 1.4.2 | **Deploy** |  | 14d | 2009-06-01 | 2009-06-18 |  |  |  | 0d |  |  | 168h |  |
| 46 | 1.4.2.1 | **QA Server Deployment** |  | 5d | 2009-06-01 | 2009-06-05 | 36 |  |  | 0d |  |  | 40h |  |
| 47 | 1.4.2.1.1 | QA Testing |  | 5d | 2009-06-01 | 2009-06-05 | 42 |  |  | 0d |  | QA | 40h |  |
| 48 | 1.4.2.1.2 | Milestone: QA Testing Completed | milestone | 0d | 2009-06-05 | 2009-06-05 | 47 |  |  | 0d |  |  |  |  |
| 49 | 1.4.2.2 | **Staging Server Deployment** |  | 5d | 2009-06-08 | 2009-06-12 |  |  |  | 0d |  |  | 80h |  |
| 50 | 1.4.2.2.1 | Stage Testing |  | 5d | 2009-06-08 | 2009-06-12 | 48 |  |  | 0d |  | QA | 40h |  |
| 51 | 1.4.2.2.2 | App scan on Stage |  | 5d | 2009-06-08 | 2009-06-12 | 48 |  |  | 0d |  | Security Team | 40h |  |
| 52 | 1.4.2.2.3 | Milestone: Stage Testing Completed | milestone | 0d | 2009-06-12 | 2009-06-12 | 51, 50 |  |  | 0d |  |  |  |  |
| 53 | 1.4.2.3 | **Production Server Deployment** |  | 4d | 2009-06-15 | 2009-06-18 |  |  |  | 0d |  |  | 48h |  |
| 54 | 1.4.2.3.1 | Production server deployment |  | 2d | 2009-06-15 | 2009-06-16 | 52 |  |  | 0d |  | Systems | 16h |  |
| 55 | 1.4.2.3.2 | Production Verification |  | 2d | 2009-06-17 | 2009-06-18 | 54 |  |  | 0d |  | Sima; Ulli | 32h |  |

| ID | WBS | Task | Type | Duration | Start | Finish | Predecessors | Total slack | Resources | Work |
| --- | --- | --- | --- | --- | --- | --- | --- | --- | --- | --- |
| 56 | 1.4.3 | **Documentation** |  | 5d | 2009-05-08 | 2009-05-14 |  | 25d |  | 40h |
| 57 | 1.4.3.1 | Documentation Edit by Documentation Team |  | 5d | 2009-05-08 | 2009-05-14 | 42 | 25d | Jill | 40h |
| 58 | 1.4.4 | **Content Page Update** |  | 3d | 2009-06-15 | 2009-06-17 |  | 1d |  | 72h |
| 59 | 1.4.4.1 | zope site update |  | 3d | 2009-06-15 | 2009-06-17 | 49 | 1d | Maki; Ulli | 48h |
| 60 | 1.4.4.2 | gForge download site update |  | 3d | 2009-06-15 | 2009-06-17 | 49 | 1d | Sima | 24h |
| 61 | 2 | caMOD 2.5.1 - Closeout | milestone | 0d | 2009-06-18 | 2009-06-18 | 41 | 0d |  |  |
