# caMOD 2.2

Schedule from MS Project, 2008-04-14 to 2008-10-15.
SAIC

## Calendars

- Standard: Mon-Fri 08:00-12:00, 13:00-17:00; Sat-Sun off.

## Resources

| Resource |
| --- |
| NCICB |
| Anand |
| Ulli |
| QA |
| Sima |
| DBA |
| 2nd Resource |
| Sima |
| Grid Resource |
| App Support |
| Systems |
| Jill |
| Nick |

## Schedule

| ID | WBS | Task | Type | Duration | Start | Finish | Predecessors | Total slack | Free slack | Constraint | Resources | Work |
| --- | --- | --- | --- | --- | --- | --- | --- | --- | --- | --- | --- | --- |
| 1 | 1 | **caMOD 2.5 Release** |  | 133d | 2008-04-14 | 2008-10-15 |  | 0d |  |  |  | 2344h |
| 2 | 1.1 | **Inception Phase** |  | 47d | 2008-04-14 | 2008-06-17 |  | 0d |  |  |  | 192h |
| 3 | 1.1.1 | Use Case and Design Doc (caBIG template) |  | 2w | 2008-04-14 | 2008-04-25 |  | 0d |  | start no earlier than 2008-04-14 | Nick | 80h |
| 4 | 1.1.2 | Review use cases / design with the "Review Board" |  | 1d | 2008-04-28 | 2008-04-28 | 3 | 0d |  |  | Nick | 8h |
| 5 | 1.1.3 | Write a design document for gridified caMOD |  | 10d | 2008-05-30 | 2008-06-12 | 45 | 12d | 0d | start no earlier than 2008-05-30 | Sima | 80h |
| 6 | 1.1.4 | Submit the gridified design document to ARB |  | 3d | 2008-06-13 | 2008-06-17 | 5 | 12d | 0d |  | Sima | 24h |
| 7 | 1.2 | Milestone: Completed Design Document | milestone | 0d | 2008-06-17 | 2008-06-17 | 4, 5, 6 | 76d | 71d |  | Anand |  |
| 8 | 1.3 | **Elaboration Phase** |  | 29d | 2008-06-18 | 2008-07-28 | 2 | 57d |  |  |  | 232h |
| 9 | 1.3.1 | Create valute domains for caDSR |  | 10d | 2008-06-18 | 2008-07-01 |  | 57d | 0d | start no earlier than 2008-02-04 | Ulli | 80h |
| 10 | 1.3.2 | Incorporate changes to the Object Model |  | 2d | 2008-07-02 | 2008-07-03 | 9 | 57d | 0d |  | Ulli | 16h |
| 11 | 1.3.3 | Make code changes due to Object Model changes |  | 5d | 2008-07-04 | 2008-07-10 | 10 | 57d | 0d |  | Nick | 40h |
| 12 | 1.3.4 | Milestone: Soft Freeze Object Model | milestone | 0d | 2008-07-10 | 2008-07-10 | 11 | 57d | 0d |  | Nick |  |
| 13 | 1.3.5 | Round Trip, Import XMI into EA |  | 2d | 2008-07-11 | 2008-07-14 | 12 | 57d | 0d |  | Ulli | 16h |
| 14 | 1.3.6 | Register Model in caDSR |  | 10d | 2008-07-15 | 2008-07-28 | 13 | 57d | 0d |  | Ulli | 80h |
| 15 | 1.4 | Milestone: Model Registered in CADSR | milestone | 0d | 2008-07-28 | 2008-07-28 | 14 | 57d |  | start no earlier than 2008-02-04 |  |  |
| 16 | 1.5 | **iteration 1:** |  | 107d | 2008-04-29 | 2008-09-24 | 4 | 0d |  |  |  | 1544h |
| 17 | 1.5.1 | **Infrastructure Upgrade** |  | 18d | 2008-04-29 | 2008-05-22 |  | 0d |  |  |  | 144h |
| 18 | 1.5.1.1 | 7115 - Automate nightly build using CruiseControl |  | 5d | 2008-04-29 | 2008-05-05 |  | 0d |  | start no earlier than 2008-02-25 | Nick | 40h |
| 19 | 1.5.1.2 | 10958 - Take existing test scripts and run them in Selenium |  | 5d | 2008-05-06 | 2008-05-12 | 18 | 0d |  |  | Nick | 40h |
| 20 | 1.5.1.3 | 11500 - Create a build.sh script for the new instance for BOTH camod.war |  | 3d | 2008-05-13 | 2008-05-15 | 19 | 0d |  |  | Nick | 24h |
| 21 | 1.5.1.4 | 12481 - Create automated deployment for caMOD to each tier |  | 5d | 2008-05-16 | 2008-05-22 | 20 | 0d |  |  | Nick | 40h |
| 22 | 1.5.2 | **Enhancements and Misc bugs** |  | 54d | 2008-05-23 | 2008-08-06 |  | 0d |  |  |  | 432h |
| 23 | 1.5.2.1 | 12216 - Release date selection not maintaining value |  | 1d | 2008-05-23 | 2008-05-23 | 17 | 0d |  |  | Nick | 8h |
| 24 | 1.5.2.2 | 7028 - Add link to pdf users guide to Quick Links menu |  | 1d | 2008-05-26 | 2008-05-26 | 23 | 0d |  |  | Nick | 8h |
| 25 | 1.5.2.3 | 5205 - cannot delete/enter radiation for old model - page does not |  | 2d | 2008-05-27 | 2008-05-28 | 24 | 0d |  |  | Nick | 16h |
| 26 | 1.5.2.4 | 11013 - Use improved PubMed fetch script on publication submission page |  | 5d | 2008-05-29 | 2008-06-04 | 25 | 0d |  |  | Nick | 40h |
| 27 | 1.5.2.5 | 12064 - Title field on publication submission field has size limit OR PubMed fetch script does not retrieve complete publication title |  | 1d | 2008-06-05 | 2008-06-05 | 26 | 0d |  |  | Nick | 8h |
| 28 | 1.5.2.6 | 5173 - Publication issues - various bugs |  | 2d | 2008-06-06 | 2008-06-09 | 27 | 0d |  |  | Nick | 16h |
| 29 | 1.5.2.7 | 7474 - Give fields in "Customize Search" feature meaningful names |  | 2d | 2008-06-10 | 2008-06-11 | 28 | 0d |  |  | Nick | 16h |
| 30 | 1.5.2.8 | 12042 - Save query function broken - Fix |  | 5d | 2008-06-12 | 2008-06-18 | 29 | 0d |  |  | Nick | 40h |
| 31 | 1.5.2.9 | 7636 - Query not saved when search returns no models. |  | 3d | 2008-06-19 | 2008-06-23 | 30 | 0d |  |  | Nick | 24h |
| 32 | 1.5.2.10 | 5204 - left side search menu disappears when user customizes search |  | 1d | 2008-06-24 | 2008-06-24 | 31 | 0d |  |  | Nick | 8h |
| 33 | 1.5.2.11 | 7850 - Place a URL field on the image page |  | 3d | 2008-06-25 | 2008-06-27 | 32 | 0d |  |  | Nick | 24h |
| 34 | 1.5.2.12 | 5097 - submitting microarray data that are stored in other applications than caArray |  | 3d | 2008-06-30 | 2008-07-02 | 33 | 0d |  | start no earlier than 2008-03-10 | Nick | 24h |
| 35 | 1.5.2.13 | 8400 - Duplication does not work for some fields |  | 5d | 2008-07-03 | 2008-07-09 | 34 | 0d |  |  | Nick | 40h |
| 36 | 1.5.2.14 | 5200 - Duplicate Model - status of duplicated model should be default be incomplete |  | 3d | 2008-07-10 | 2008-07-14 | 35 | 0d |  |  | Nick | 24h |
| 37 | 1.5.2.15 | 5249 - Fix searches - allow oracle result set > 1000 |  | 10d | 2008-07-15 | 2008-07-28 | 36 | 0d |  |  | Nick | 80h |
| 38 | 1.5.2.16 | 11007 - Add search for PMID to advanced search page |  | 3d | 2008-07-29 | 2008-07-31 | 37 | 0d |  |  | Nick | 24h |
| 39 | 1.5.2.17 | 9127 - Customize publication pages for rat to allow submissio & display of RGD references |  | 4d | 2008-08-01 | 2008-08-06 | 38 | 0d |  |  | Nick | 32h |

| ID | WBS | Task | Duration | Start | Finish | Predecessors | Total slack | Free slack | Constraint | Resources | Work |
| --- | --- | --- | --- | --- | --- | --- | --- | --- | --- | --- | --- |
| 40 | 1.5.3 | **EVS Tree** | 35d | 2008-08-07 | 2008-09-24 |  | 0d |  |  |  | 280h |
| 41 | 1.5.3.1 | 10957 - LexBig Prototype: Investiate and demo connection to Lexbig Vocabulary System / Architecture | 20d | 2008-08-07 | 2008-09-03 | 22 | 0d |  |  | Nick | 160h |
| 42 | 1.5.3.2 | Bug Fixes | 15d | 2008-09-04 | 2008-09-24 | 41 | 0d |  |  | Nick | 120h |
| 43 | 1.5.4 | **Enhancements and Misc bugs** | 7d | 2008-05-05 | 2008-05-13 |  | 24d |  |  |  | 56h |
| 44 | 1.5.4.1 | Clean up induced mutation & environmental factor | 5d | 2008-05-05 | 2008-05-09 |  | 24d | 0d | start no earlier than 2008-05-05 | Sima | 40h |
| 45 | 1.5.4.2 | 5172 - Do not delete EnvironmentalFactor objects - instead reuse and leave in DB | 2d | 2008-05-12 | 2008-05-13 | 44 | 24d | 12d | start no earlier than 2008-05-05 | Sima | 16h |
| 46 | 1.5.5 | **Remote API / Grid** | 42d | 2008-06-18 | 2008-08-14 |  | 12d | 0d |  |  | 336h |
| 47 | 1.5.5.1 | Make code changes due to Object Model changes | 5d | 2008-06-18 | 2008-06-24 | 6 | 12d | 0d | start no earlier than 2008-05-05 | Sima | 40h |
| 48 | 1.5.5.2 | Milestone: Soft Freeze Object Model | 2d | 2008-06-25 | 2008-06-26 | 47 | 12d | 0d |  | Sima | 16h |
| 49 | 1.5.5.3 | Leverage caCORE 3.2 for remote API | 1w | 2008-06-27 | 2008-07-03 | 48 | 12d | 0d | start no earlier than 2008-05-05 | Sima | 40h |
| 50 | 1.5.5.4 | Make caMod available in the grid (production) | 5w | 2008-07-04 | 2008-08-07 | 49 | 12d | 0d |  | Sima | 200h |
| 51 | 1.5.5.5 | Make only edited-approved models available through API | 1w | 2008-08-08 | 2008-08-14 | 50 | 12d |  |  | Sima | 40h |
| 52 | 1.5.6 | **Testing** | 17d | 2008-08-15 | 2008-09-08 |  | 12d |  |  |  | 296h |
| 53 | 1.5.6.1 | 7142 - Test cases that need to be added to the QA test scripts | 5d | 2008-08-15 | 2008-08-21 | 46, 17, 22 | 12d | 0d |  | Sima; Ulli; Nick | 120h |
| 54 | 1.5.6.2 | Deploy iteration on DEV Server | 2d | 2008-08-22 | 2008-08-25 | 53 | 12d | 0d |  | Sima | 16h |
| 55 | 1.5.6.3 | Test on DEV tier | 2w | 2008-08-26 | 2008-09-08 | 54 | 12d |  |  | Ulli; Sima | 160h |
| 56 | 1.6 | **Transition Phase** | 15d | 2008-09-25 | 2008-10-15 | 16 | 0d |  |  |  | 376h |
| 57 | 1.6.1 | **QA** | 10d | 2008-09-25 | 2008-10-08 | 7 | 5d |  |  | QA | 160h |
| 58 | 1.6.1.1 | Finalize Testplan | 1w | 2008-09-25 | 2008-10-01 | 7 | 5d | 0d |  | QA | 40h |
| 59 | 1.6.1.2 | Finalize Test Cases | 1w | 2008-10-02 | 2008-10-08 | 58 | 5d |  |  | QA | 40h |
| 60 | 1.6.2 | **Deploy** | 15d | 2008-09-25 | 2008-10-15 |  | 0d |  |  |  | 136h |
| 61 | 1.6.2.1 | **QA Server Deployment** | 12d | 2008-09-25 | 2008-10-10 | 55 | 0d |  |  |  | 80h |
| 62 | 1.6.2.1.1 | QA Testing | 2w | 2008-09-25 | 2008-10-08 |  | 0d |  |  | QA | 80h |
| 63 | 1.6.2.1.2 | Security Scan on QA | 2d | 2008-10-09 | 2008-10-10 | 62 | 3d |  |  |  |  |

| ID | WBS | Task | Type | Duration | Start | Finish | Predecessors | Total slack | Free slack | Resources | Work |
| --- | --- | --- | --- | --- | --- | --- | --- | --- | --- | --- | --- |
| 64 | 1.6.2.2 | **Staging Server Deployment** |  | 3d | 2008-10-09 | 2008-10-13 | 62 | 0d |  |  | 24h |
| 65 | 1.6.2.2.1 | Staging Testing |  | 3d | 2008-10-09 | 2008-10-13 |  | 0d |  | Ulli | 24h |
| 66 | 1.6.2.3 | **Production Server Deployment** |  | 2d | 2008-10-14 | 2008-10-15 | 65 | 0d |  | Sima | 32h |
| 67 | 1.6.2.3.1 | Production Verification |  | 2d | 2008-10-14 | 2008-10-15 |  | 0d |  | Ulli | 16h |
| 68 | 1.6.3 | **Documentation** |  | 10d | 2008-09-25 | 2008-10-08 | 46 | 5d |  |  | 80h |
| 69 | 1.6.3.1 | Document How to Connect to caMOD |  | 1w | 2008-09-25 | 2008-10-01 |  | 5d | 0d | Sima | 40h |
| 70 | 1.6.3.2 | Documentation Edit by Documentation Team |  | 5d | 2008-10-02 | 2008-10-08 | 69 | 5d |  | Jill | 40h |
| 71 | 1.6.4 | caMOD 2.5 - Closeout | milestone | 0d | 2008-10-15 | 2008-10-15 | 67 | 0d |  |  |  |
