# camod Release 2.6.0

Schedule from MS Project, 2009-06-15 to 2009-11-04.
NCI

## Calendars

- Standard: Mon-Fri 08:00-12:00, 13:00-17:00; Sat-Sun off.

## Resources

| Resource |
| --- |
| Sima |
| Ulli |
| Juli |
| Maki |
| Kavitha |
| QA |
| Jill |
| Security Team |
| Systems |
| Lalitha |

## Schedule

| ID | WBS | Task | Type | Duration | Start | Finish | Predecessors | Total slack | Free slack | Constraint | Resources | Work |
| --- | --- | --- | --- | --- | --- | --- | --- | --- | --- | --- | --- | --- |
| 1 | 1 | **caMOD 2.6.0Release** |  | 103d | 2009-06-15 | 2009-11-04 |  | 0d |  |  |  | 1896h |
| 2 | 1.1 | **Inception Phase** |  | 15d | 2009-06-15 | 2009-07-03 |  | 0d |  |  |  | 240h |
| 3 | 1.1.1 | Scope 2.6.0 Release |  | 12d | 2009-06-15 | 2009-06-30 |  | 0d |  | start no earlier than 2009-06-15 | Sima; Ulli | 184h |
| 4 | 1.1.2 | Schedule 2.6.0 Release |  | 3d | 2009-07-01 | 2009-07-03 | 3 | 0d |  |  | Sima; Maki; Ulli | 56h |
| 5 | 1.1.3 | Milestone: Inception Completed | milestone | 0d | 2009-07-03 | 2009-07-03 | 4 | 0d |  |  |  |  |
| 6 | 1.2 | **Elaboration Phase** |  | 10d | 2009-07-06 | 2009-07-17 | 5 | 0d |  |  |  | 128h |
| 7 | 1.2.1 | Use Case and Design Doc (caBIG template) |  | 7d | 2009-07-06 | 2009-07-14 |  | 0d |  |  | Sima | 56h |
| 8 | 1.2.2 | Review use cases / design with the "Review Board" |  | 3d | 2009-07-15 | 2009-07-17 | 7 | 0d |  | finish no earlier than 2009-01-27 | Juli; Maki; Ulli | 72h |
| 9 | 1.2.3 | Milestone: Elaboration Completed | milestone | 0d | 2009-07-17 | 2009-07-17 | 7, 8 | 0d |  |  |  |  |
| 10 | 1.3 | **Construction Phase** |  | 65.5d | 2009-07-20 | 2009-10-19 | 6 | 0d |  |  |  | 984h |
| 11 | 1.3.1 | **BDAfy caMOD** |  | 33.25d | 2009-07-20 | 2009-09-03 |  | 12.5d |  |  |  | 360h |
| 12 | 1.3.1.1 | **Project set up** |  | 1d | 2009-07-20 | 2009-07-20 |  | 12.5d | 0d |  |  | 48h |
| 13 | 1.3.1.1.1 | CVS to SVN move |  | 1d | 2009-07-20 | 2009-07-20 |  | 12.5d |  |  | Sima; Maki | 16h |
| 14 | 1.3.1.1.2 | Request CI server |  | 1d | 2009-07-20 | 2009-07-20 |  | 12.5d |  |  | Sima; Maki | 16h |
| 15 | 1.3.1.1.3 | Request each tier to be provisioned |  | 1d | 2009-07-20 | 2009-07-20 |  | 12.5d |  |  | Sima; Maki | 16h |
| 16 | 1.3.1.2 | Copy development checklist and recreate for project and submit to BDA team. |  | 1d | 2009-07-21 | 2009-07-21 | 12 | 12.5d | 0d |  | Sima | 8h |
| 17 | 1.3.1.3 | Create a gap analysis based on BDA Checklist and submit to the BDA team. |  | 1d | 2009-07-22 | 2009-07-22 | 16 | 12.5d | 0d |  | Sima | 8h |
| 18 | 1.3.1.4 | Attend BDA Overview Session (Session 1) |  | 1d | 2009-07-23 | 2009-07-23 | 17 | 12.5d | 0d |  | Sima | 8h |
| 19 | 1.3.1.5 | Implement BDA on Java Petstore (to get familiar with scripts/features) |  | 1d | 2009-07-24 | 2009-07-24 | 18 | 12.5d | 0d |  | Sima | 8h |
| 20 | 1.3.1.6 | Complete and submit a draft copy of this project plan to the BDA team prior to session 2. |  | 1d | 2009-07-21 | 2009-07-21 | 12 | 74d | 0d |  | Maki | 8h |
| 21 | 1.3.1.7 | Attend BDA Implementation Session (Session 2) |  | 1d | 2009-07-27 | 2009-07-27 | 19 | 12.5d | 0d |  | Sima | 8h |
| 22 | 1.3.1.8 | View BDA screencasts (as necessary) |  | 1d | 2009-07-22 | 2009-07-22 | 20 | 75d |  |  | Sima | 8h |
| 23 | 1.3.1.9 | Create or update your Architecture Review Checklist (ARC) (See example) |  | 1d | 2009-07-28 | 2009-07-28 | 21 | 12.5d | 0d |  | Sima | 8h |
| 24 | 1.3.1.10 | Submit your wiki based BDA Project Plan to Systems, BDA, and the Government Sponsor. |  | 1d | 2009-07-22 | 2009-07-22 | 20 | 74d | 0d |  | Maki | 8h |
| 25 | 1.3.1.11 | Create Systems request (see Requesting CI Server section) for provisioning CI VM. |  | 1d | 2009-07-23 | 2009-07-23 | 24 | 74d |  |  | Maki | 8h |
| 26 | 1.3.1.12 | Attend a Project Plan Review Meeting with, Development, Systems, BDA, and the Government Sponsor to come up with agreed upon due dates of tasks. |  | 1d | 2009-07-23 | 2009-07-23 | 24 | 74d |  |  | Maki; Sima | 16h |
| 27 | 1.3.1.13 | Submit ARC request to Systems and Attend ARC meeting (See example) and get approval. |  | 1d | 2009-07-29 | 2009-07-29 | 23 | 12.5d | 0d |  | Sima | 8h |
| 28 | 1.3.1.14 | Create Systems request (see Requesting a Tier section) for provisioning DEV environment, AHP Track, access to scm-private svn repository |  | 1d | 2009-07-30 | 2009-07-30 | 27 | 12.5d | 0d |  | Sima | 8h |
| 29 | 1.3.1.15 | Write up current and complete installation instructions |  | 1d | 2009-07-31 | 2009-07-31 | 28 | 12.5d | 0d |  | Sima | 8h |
| 30 | 1.3.1.16 | Meet with BDA to review your installation instructions and do gap analysis against BDA templates and Macros |  | 1.5d | 2009-08-03 | 2009-08-04 | 29 | 12.5d | 0d |  | Sima | 12h |
| 31 | 1.3.1.17 | Modify directory structure |  | 1d | 2009-08-04 | 2009-08-05 | 30 | 12.5d | 0d |  | Sima | 8h |
| 32 | 1.3.1.18 | Identify and externalize per-environment properties into .properties files. See BDA Template-Properties for an explanation |  | 1d | 2009-08-05 | 2009-08-06 | 31 | 12.5d | 0d |  | Sima | 8h |
| 33 | 1.3.1.19 | Implement BDA templates and macros for your project (See BDA Template Scripts - How to implement) |  | 1d | 2009-08-06 | 2009-08-07 | 32 | 12.5d | 0d |  | Sima | 8h |
| 34 | 1.3.1.20 | Eliminate build script duality (duplication between master build scripts and subproject build scripts. See BDA Build Script Standards) |  | 1d | 2009-08-07 | 2009-08-10 | 33 | 12.5d | 0d |  | Sima | 8h |
| 35 | 1.3.1.21 | Verify build/deployment is JADS compatible (Install must be JAD compatible) |  | 1d | 2009-08-10 | 2009-08-11 | 34 | 12.5d | 0d |  | Sima | 8h |
| 36 | 1.3.1.22 | Setup CI Server (How to Install and Configure Hudson |  | 1d | 2009-08-11 | 2009-08-12 | 35 | 12.5d | 0d |  | Sima | 8h |
| 37 | 1.3.1.23 | First Build to Dev - Test the Command Line Deployment in DEV environment |  | 1d | 2009-08-12 | 2009-08-13 | 36 | 12.5d | 0d |  | Sima | 8h |
| 38 | 1.3.1.24 | Build Management implementation in DEV target environment (AntHill Pro Setup) |  | 1d | 2009-08-13 | 2009-08-14 | 37 | 12.5d | 0d |  | Sima | 8h |
| 39 | 1.3.1.25 | Create Systems request for provisioning QA environment, AHP Track, access to scm-private svn repository |  | 1d | 2009-08-14 | 2009-08-17 | 38 | 12.5d | 0d |  | Sima | 8h |
| 40 | 1.3.1.26 | Testing/Static Analysis Customization |  | 5d | 2009-08-17 | 2009-08-24 | 39 | 12.5d | 0d |  | Sima | 40h |
| 41 | 1.3.1.27 | * Implement GUI installers |  | 2d | 2009-08-24 | 2009-08-26 | 40 | 12.5d | 0d |  | Sima | 16h |
| 42 | 1.3.1.28 | Create wiki-based deployment instructions (based on template ) |  | 1d | 2009-08-26 | 2009-08-27 | 41 | 12.5d | 0d |  | Sima | 8h |
| 43 | 1.3.1.29 | First Deploy to QA -Test the Command Line Deployment in QA environment |  | 1d | 2009-08-27 | 2009-08-28 | 42 | 12.5d | 0d |  | Sima | 8h |
| 44 | 1.3.1.30 | Build Management implementation in QA (AntHill Pro Setup) |  | 1d | 2009-08-28 | 2009-08-31 | 43 | 12.5d | 0d |  | Sima | 8h |
| 45 | 1.3.1.31 | Create Systems request for provisioning STAGE environment, AHP Track, access to scm-private svn repository |  | 1d | 2009-08-31 | 2009-09-01 | 44 | 12.5d | 0d |  | Sima | 8h |
| 46 | 1.3.1.32 | Configure nightly AntHill Pro track DEV |  | 1d | 2009-09-01 | 2009-09-02 | 45 | 12.5d | 0d |  | Sima | 8h |
| 47 | 1.3.1.33 | Ask BDA team to add your project to BDA Certification Dashboard |  | 0.25d | 2009-09-02 | 2009-09-02 | 46 | 45.25d |  |  | Sima | 2h |
| 48 | 1.3.1.34 | Request Systems team to configure STAGE deployment in AntHill Pro |  | 0.25d | 2009-09-02 | 2009-09-02 | 46 | 45d | 0d |  | Sima | 2h |
| 49 | 1.3.1.35 | Request Systems to perform dry-run deployment in STAGE target environment by following Build Promotion Checklist |  | 0.25d | 2009-09-02 | 2009-09-02 | 48 | 45d |  |  | Sima | 2h |
| 50 | 1.3.1.36 | Create Systems requests for provisioning PROD environment, AHP Track, access to scm-private svn repository |  | 0.25d | 2009-09-02 | 2009-09-02 | 46 | 12.5d | 0d |  | Sima | 2h |
| 51 | 1.3.1.37 | Request Systems team to configure PROD deployment in AntHill Pro by following Build Promotion Checklist |  | 0.25d | 2009-09-02 | 2009-09-02 | 50 | 12.5d | 0d |  | Sima | 2h |
| 52 | 1.3.1.38 | Request deployment to PROD target environment |  | 0.25d | 2009-09-03 | 2009-09-03 | 51 | 12.5d | 0d |  | Sima | 2h |
| 53 | 1.3.1.39 | Milestone: caMOD BDA certified | milestone | 0d | 2009-09-03 | 2009-09-03 | 52 | 12.5d | 0d |  |  |  |

| ID | WBS | Task | Type | Duration | Start | Finish | Predecessors | Total slack | Free slack | Resources | Work |
| --- | --- | --- | --- | --- | --- | --- | --- | --- | --- | --- | --- |
| 54 | 1.3.2 | **BDAfy EVSTree** |  | 32.25d | 2009-09-03 | 2009-10-19 | 53 | 12.5d |  |  | 360h |
| 55 | 1.3.2.1 | Milestone: Start EVSTree BDAfication | milestone | 0d | 2009-09-03 | 2009-09-03 | 53 | 40.75d | 0d |  |  |
| 56 | 1.3.2.2 | **Project set up** |  | 1d | 2009-09-03 | 2009-09-04 | 55 | 40.75d | 0d |  | 48h |
| 57 | 1.3.2.2.1 | CVS to SVN move |  | 1d | 2009-09-03 | 2009-09-04 |  | 77.75d |  | Sima; Maki | 16h |
| 58 | 1.3.2.2.2 | Request CI server |  | 1d | 2009-09-03 | 2009-09-04 |  | 77.75d |  | Sima; Maki | 16h |
| 59 | 1.3.2.2.3 | Request each tier to be provisioned |  | 1d | 2009-09-03 | 2009-09-04 |  | 77.75d |  | Sima; Maki | 16h |
| 60 | 1.3.2.3 | Copy development checklist and recreate for project and submit to BDA team. |  | 1d | 2009-09-03 | 2009-09-04 | 53 | 12.5d | 0d | Sima | 8h |
| 61 | 1.3.2.4 | Create a gap analysis based on BDA Checklist and submit to the BDA team. |  | 1d | 2009-09-04 | 2009-09-07 | 60 | 12.5d | 0d | Sima | 8h |
| 62 | 1.3.2.5 | Attend BDA Overview Session (Session 1) |  | 1d | 2009-09-07 | 2009-09-08 | 61 | 12.5d | 0d | Sima | 8h |
| 63 | 1.3.2.6 | Implement BDA on Java Petstore (to get familiar with scripts/features) |  | 1d | 2009-09-08 | 2009-09-09 | 62 | 12.5d | 0d | Sima | 8h |
| 64 | 1.3.2.7 | Complete and submit a draft copy of this project plan to the BDA team prior to session 2. |  | 1d | 2009-09-04 | 2009-09-07 | 56 | 40.75d | 0d | Maki | 8h |
| 65 | 1.3.2.8 | Attend BDA Implementation Session (Session 2) |  | 1d | 2009-09-09 | 2009-09-10 | 63 | 12.5d | 0d | Sima | 8h |
| 66 | 1.3.2.9 | View BDA screencasts (as necessary) |  | 1d | 2009-09-07 | 2009-09-08 | 64 | 41.75d |  | Sima | 8h |
| 67 | 1.3.2.10 | Create or update your Architecture Review Checklist (ARC) (See example) |  | 1d | 2009-09-10 | 2009-09-11 | 65 | 12.5d | 0d | Sima | 8h |
| 68 | 1.3.2.11 | Submit your wiki based BDA Project Plan to Systems, BDA, and the Government Sponsor. |  | 1d | 2009-09-07 | 2009-09-08 | 64 | 40.75d | 0d | Maki | 8h |
| 69 | 1.3.2.12 | Create Systems request (see Requesting CI Server section) for provisioning CI VM. |  | 1d | 2009-09-08 | 2009-09-09 | 68 | 40.75d |  | Maki | 8h |
| 70 | 1.3.2.13 | Attend a Project Plan Review Meeting with, Development, Systems, BDA, and the Government Sponsor to come up with agreed upon due dates of tasks. |  | 1d | 2009-09-08 | 2009-09-09 | 68 | 40.75d |  | Maki; Sima | 16h |
| 71 | 1.3.2.14 | Submit ARC request to Systems and Attend ARC meeting (See example) and get approval. |  | 1d | 2009-09-11 | 2009-09-14 | 67 | 12.5d | 0d | Sima | 8h |
| 72 | 1.3.2.15 | Create Systems request (see Requesting a Tier section) for provisioning DEV environment, AHP Track, access to scm-private svn repository |  | 1d | 2009-09-14 | 2009-09-15 | 71 | 12.5d | 0d | Sima | 8h |
| 73 | 1.3.2.16 | Write up current and complete installation instructions |  | 1d | 2009-09-15 | 2009-09-16 | 72 | 12.5d | 0d | Sima | 8h |
| 74 | 1.3.2.17 | Meet with BDA to review your installation instructions and do gap analysis against BDA templates and Macros |  | 1.5d | 2009-09-16 | 2009-09-17 | 73 | 12.5d | 0d | Sima | 12h |
| 75 | 1.3.2.18 | Modify directory structure |  | 1d | 2009-09-17 | 2009-09-18 | 74 | 12.5d | 0d | Sima | 8h |
| 76 | 1.3.2.19 | Identify and externalize per-environment properties into .properties files. See BDA Template-Properties for an explanation |  | 1d | 2009-09-18 | 2009-09-21 | 75 | 12.5d | 0d | Sima | 8h |
| 77 | 1.3.2.20 | Implement BDA templates and macros for your project (See BDA Template Scripts - How to implement) |  | 1d | 2009-09-21 | 2009-09-22 | 76 | 12.5d | 0d | Sima | 8h |
| 78 | 1.3.2.21 | Eliminate build script duality (duplication between master build scripts and subproject build scripts. See BDA Build Script Standards) |  | 1d | 2009-09-22 | 2009-09-23 | 77 | 12.5d | 0d | Sima | 8h |
| 79 | 1.3.2.22 | Verify build/deployment is JADS compatible (Install must be JAD compatible) |  | 1d | 2009-09-23 | 2009-09-24 | 78 | 12.5d | 0d | Sima | 8h |
| 80 | 1.3.2.23 | Setup CI Server (How to Install and Configure Hudson |  | 1d | 2009-09-24 | 2009-09-25 | 79 | 12.5d | 0d | Sima | 8h |
| 81 | 1.3.2.24 | First Build to Dev - Test the Command Line Deployment in DEV environment |  | 1d | 2009-09-25 | 2009-09-28 | 80 | 12.5d | 0d | Sima | 8h |
| 82 | 1.3.2.25 | Build Management implementation in DEV target environment (AntHill Pro Setup) |  | 1d | 2009-09-28 | 2009-09-29 | 81 | 12.5d | 0d | Sima | 8h |
| 83 | 1.3.2.26 | Create Systems request for provisioning QA environment, AHP Track, access to scm-private svn repository |  | 1d | 2009-09-29 | 2009-09-30 | 82 | 12.5d | 0d | Sima | 8h |
| 84 | 1.3.2.27 | Testing/Static Analysis Customization |  | 5d | 2009-09-30 | 2009-10-07 | 83 | 12.5d | 0d | Sima | 40h |
| 85 | 1.3.2.28 | * Implement GUI installers |  | 2d | 2009-10-07 | 2009-10-09 | 84 | 12.5d | 0d | Sima | 16h |
| 86 | 1.3.2.29 | Create wiki-based deployment instructions (based on template ) |  | 1d | 2009-10-09 | 2009-10-12 | 85 | 12.5d | 0d | Sima | 8h |
| 87 | 1.3.2.30 | First Deploy to QA -Test the Command Line Deployment in QA environment |  | 1d | 2009-10-12 | 2009-10-13 | 86 | 12.5d | 0d | Sima | 8h |
| 88 | 1.3.2.31 | Build Management implementation in QA (AntHill Pro Setup) |  | 1d | 2009-10-13 | 2009-10-14 | 87 | 12.5d | 0d | Sima | 8h |
| 89 | 1.3.2.32 | Create Systems request for provisioning STAGE environment, AHP Track, access to scm-private svn repository |  | 1d | 2009-10-14 | 2009-10-15 | 88 | 12.5d | 0d | Sima | 8h |
| 90 | 1.3.2.33 | Configure nightly AntHill Pro track DEV |  | 1d | 2009-10-15 | 2009-10-16 | 89 | 12.5d | 0d | Sima | 8h |
| 91 | 1.3.2.34 | Ask BDA team to add your project to BDA Certification Dashboard |  | 0.25d | 2009-10-16 | 2009-10-16 | 90 | 13d |  | Sima | 2h |
| 92 | 1.3.2.35 | Request Systems team to configure STAGE deployment in AntHill Pro |  | 0.25d | 2009-10-16 | 2009-10-16 | 90 | 12.75d | 0d | Sima | 2h |
| 93 | 1.3.2.36 | Request Systems to perform dry-run deployment in STAGE target environment by following Build Promotion Checklist |  | 0.25d | 2009-10-19 | 2009-10-19 | 92 | 12.75d |  | Sima | 2h |
| 94 | 1.3.2.37 | Create Systems requests for provisioning PROD environment, AHP Track, access to scm-private svn repository |  | 0.25d | 2009-10-16 | 2009-10-16 | 90 | 12.5d | 0d | Sima | 2h |
| 95 | 1.3.2.38 | Request Systems team to configure PROD deployment in AntHill Pro by following Build Promotion Checklist |  | 0.25d | 2009-10-19 | 2009-10-19 | 94 | 12.5d | 0d | Sima | 2h |
| 96 | 1.3.2.39 | Request deployment to PROD target environment |  | 0.25d | 2009-10-19 | 2009-10-19 | 95 | 12.5d | 0d | Sima | 2h |
| 97 | 1.3.2.40 | Milestone: caMOD BDA certified | milestone | 0d | 2009-10-19 | 2009-10-19 | 96 | 12.5d | 0d |  |  |
| 98 | 1.3.3 | Milestone: Complete Development | milestone | 0d | 2009-10-19 | 2009-10-19 | 53, 97 | 12.5d |  |  |  |

| ID | WBS | Task | Type | Duration | Start | Finish | Predecessors | Total slack | Constraint | Resources | Work |
| --- | --- | --- | --- | --- | --- | --- | --- | --- | --- | --- | --- |
| 99 | 1.3.4 | **Testing** |  | 21d | 2009-07-20 | 2009-08-17 |  | 0d |  |  | 264h |
| 100 | 1.3.4.1 | Update test cases |  | 9d | 2009-07-20 | 2009-07-30 |  | 0d |  | Sima; Ulli | 88h |
| 101 | 1.3.4.2 | Deploy iteration on DEV Server |  | 2d | 2009-07-31 | 2009-08-03 | 100 | 0d |  | Sima | 16h |
| 102 | 1.3.4.3 | Test on DEV tier |  | 10d | 2009-08-04 | 2009-08-17 | 101 | 0d |  | Sima; Ulli | 160h |
| 103 | 1.3.5 | Milestone: Construction Completed | milestone | 0d | 2009-08-17 | 2009-08-17 | 99 | 0d |  |  |  |
| 104 | 1.4 | **Transition Phase** |  | 47d | 2009-09-01 | 2009-11-04 |  | 0d |  |  | 544h |
| 105 | 1.4.1 | **QA** |  | 33d | 2009-09-01 | 2009-10-15 |  | 0d |  |  | 264h |
| 106 | 1.4.1.1 | Finalize Testplan |  | 30d | 2009-09-01 | 2009-10-12 |  | 0d | start no earlier than 2009-09-01 | QA | 240h |
| 107 | 1.4.1.2 | Finalize Test Cases |  | 3d | 2009-10-13 | 2009-10-15 | 106 | 0d |  | QA | 24h |
| 108 | 1.4.2 | **Deploy** |  | 14d | 2009-10-16 | 2009-11-04 |  | 0d |  |  | 168h |
| 109 | 1.4.2.1 | **QA Server Deployment** |  | 5d | 2009-10-16 | 2009-10-22 | 103, 105 | 0d |  |  | 40h |
| 110 | 1.4.2.1.1 | QA Testing |  | 5d | 2009-10-16 | 2009-10-22 | 105 | 0d |  | QA | 40h |
| 111 | 1.4.2.1.2 | Milestone: QA Testing Completed | milestone | 0d | 2009-10-22 | 2009-10-22 | 110 | 0d |  |  |  |
| 112 | 1.4.2.2 | **Staging Server Deployment** |  | 5d | 2009-10-23 | 2009-10-29 |  | 0d |  |  | 80h |
| 113 | 1.4.2.2.1 | Stage Testing |  | 5d | 2009-10-23 | 2009-10-29 | 111 | 0d |  | QA | 40h |
| 114 | 1.4.2.2.2 | App scan on Stage |  | 5d | 2009-10-23 | 2009-10-29 | 111 | 0d |  | Security Team | 40h |
| 115 | 1.4.2.2.3 | Milestone: Stage Testing Completed | milestone | 0d | 2009-10-29 | 2009-10-29 | 114, 113 | 0d |  |  |  |
| 116 | 1.4.2.3 | **Production Server Deployment** |  | 4d | 2009-10-30 | 2009-11-04 |  | 0d |  |  | 48h |
| 117 | 1.4.2.3.1 | Production server deployment |  | 2d | 2009-10-30 | 2009-11-02 | 115 | 0d |  | Systems | 16h |
| 118 | 1.4.2.3.2 | Production Verification |  | 2d | 2009-11-03 | 2009-11-04 | 117 | 0d |  | Sima; Ulli | 32h |
| 119 | 1.4.3 | **Documentation** |  | 5d | 2009-10-16 | 2009-10-22 |  | 9d |  |  | 40h |
| 120 | 1.4.3.1 | Documentation Edit by Documentation Team |  | 5d | 2009-10-16 | 2009-10-22 | 105 | 9d |  | Jill | 40h |
| 121 | 1.4.4 | **Content Page Update** |  | 3d | 2009-10-30 | 2009-11-03 |  | 1d |  |  | 72h |
| 122 | 1.4.4.1 | zope site update |  | 3d | 2009-10-30 | 2009-11-03 | 112 | 1d |  | Maki; Ulli | 48h |
| 123 | 1.4.4.2 | gForge download site update |  | 3d | 2009-10-30 | 2009-11-03 | 112 | 1d |  | Sima | 24h |
| 124 | 2 | caMOD 2.6.0 - Closeout | milestone | 0d | 2009-11-04 | 2009-11-04 | 104 | 0d |  |  |  |
