# camod Release 2.8.0

Schedule from MS Project, 2010-07-06 to 2011-04-28.
NCI

## Calendars

- Standard: Mon-Fri 08:00-12:00, 13:00-17:00; Sat-Sun off. Exceptions (off unless hours are given): 2010-09-06 (Labor Day), 2010-09-13 to 2010-09-15 (caBig Annual Meeting), 2010-10-11 (Columbus Day), 2010-11-11 (Veterans Day), 2010-11-25 (Thanksgiving Day), 2010-12-24 (Christmas Eve), 2010-12-31 (New Year's Eve).

## Resources

| Resource |
| --- |
| Sima |
| Ulli |
| Juli |
| Maki |
| Kavitha |
| QA |
| Jill |
| Security Team |
| Systems |
| Lalitha |

## Schedule

| ID | WBS | Task | Type | Duration | Start | Finish | Predecessors | Total slack | Constraint | Resources | Work |
| --- | --- | --- | --- | --- | --- | --- | --- | --- | --- | --- | --- |
| 1 | 1 | **caMOD 2.8.0 Release** |  | 203.5d | 2010-07-06 | 2011-04-28 |  | 0d |  |  | 1984h |
| 2 | 1.1 | **Inception Phase** |  | 6d | 2010-07-06 | 2010-07-13 |  | 0d |  |  | 104h |
| 3 | 1.1.1 | Scope 2.8.0 Release |  | 3d | 2010-07-06 | 2010-07-08 |  | 0d | start no earlier than 2010-07-06 | Sima; Ulli | 48h |
| 4 | 1.1.2 | Schedule 2.8.0 Release |  | 3d | 2010-07-09 | 2010-07-13 | 3 | 0d |  | Sima; Maki; Ulli | 56h |
| 5 | 1.1.3 | Milestone: Inception Completed | milestone | 0d | 2010-07-13 | 2010-07-13 | 4 | 0d |  |  |  |
| 6 | 1.2 | **Elaboration Phase** |  | 6d | 2010-07-14 | 2010-07-21 | 5 | 0d |  |  | 64h |
| 7 | 1.2.1 | Use Case and Design Doc (caBIG template) |  | 5d | 2010-07-14 | 2010-07-20 |  | 0d |  | Sima | 40h |
| 8 | 1.2.2 | Review use cases / design with the "Review Board" |  | 1d | 2010-07-21 | 2010-07-21 | 7 | 0d | finish no earlier than 2009-01-27 | Juli; Maki; Ulli | 24h |
| 9 | 1.2.3 | Milestone: Elaboration Completed | milestone | 0d | 2010-07-21 | 2010-07-21 | 7, 8 | 0d |  |  |  |
| 10 | 1.3 | **Construction Phase** |  | 159.5d | 2010-07-22 | 2011-03-15 | 6 | 0d |  |  | 1372h |
| 11 | 1.3.1 | 18438 - Change label from MMHCC Repository to NCI Mouse Repository |  | 0.5d | 2010-07-22 | 2010-07-22 |  | 0d |  | Sima | 4h |
| 12 | 1.3.2 | 23750 - links to sid images needs to be changes |  | 10d | 2010-07-22 | 2010-08-05 | 11 | 0d |  | Sima | 80h |
| 13 | 1.3.3 | 17909 - Help file in Available from ZFIN (Zebrafish Information Network) shows blank page. |  | 1d | 2010-08-05 | 2010-08-06 | 12 | 0d |  | Sima | 8h |
| 14 | 1.3.4 | 7607 - Unsupported file type: bmp can be handled more gracefully |  | 4d | 2010-08-06 | 2010-08-12 | 13 | 0d |  | Sima | 32h |
| 15 | 1.3.5 | 20593 - Entered date changes every single time the model characteristics page is changed |  | 2d | 2010-08-12 | 2010-08-16 | 14 | 0d |  | Sima | 16h |
| 16 | 1.3.6 | 17041 - Add search for model id to simple and advanced search page |  | 1d | 2010-08-16 | 2010-08-17 | 15 | 0d |  | Sima | 8h |
| 17 | 1.3.7 | 19879 - Display PMID number on search page |  | 0.5d | 2010-08-17 | 2010-08-17 | 16 | 0d |  | Sima | 4h |
| 18 | 1.3.8 | 21701 - html tag syntax appears in Adv Srch / Compound/Drug dropdown menu |  | 0.5d | 2010-08-18 | 2010-08-18 | 17 | 0d |  | Sima | 4h |
| 19 | 1.3.9 | 23452 - Wrap First Author field for MTB pages |  | 1d | 2010-08-18 | 2010-08-19 | 18 | 0d |  | Sima | 8h |
| 20 | 1.3.10 | 18684 - Add email address to the Admin - User Management - Add User page |  | 2d | 2010-08-19 | 2010-08-23 | 19 | 0d |  | Sima | 16h |
| 21 | 1.3.11 | 14560 - Separation between keyword seach and simple/advanced search is not obvious to user |  | 1d | 2010-08-23 | 2010-08-24 | 20 | 0d |  | Sima | 8h |
| 22 | 1.3.12 | 12089 - improve labeling and sorting of promoter, poly A and intro entries on search page |  | 2d | 2010-08-24 | 2010-08-26 | 21 | 0d |  | Sima | 16h |
| 23 | 1.3.13 | 24757 - customized search does not show targeted modification type column |  | 1d | 2010-08-26 | 2010-08-27 | 22 | 0d |  | Sima | 8h |
| 24 | 1.3.14 | 4769 - Provide additional data from MGI - Parsing MGI data (Proof of Concept) |  | 10d | 2010-08-27 | 2010-09-16 | 23 | 0d |  | Sima | 80h |
| 25 | 1.3.15 | 4769 - Provide additional data from MGI - Parsing MGI data (Implementation) |  | 10d | 2010-09-16 | 2010-09-30 | 24 | 0d |  | Sima | 80h |
| 26 | 1.3.16 | 4788 - IDEA - redo genetic description page to retrieve data from external source similar to what publication page does with PubMed |  | 10d | 2010-09-30 | 2010-10-15 | 25 | 0d |  | Sima | 80h |
| 27 | 1.3.17 | 11501 - Add mouse subspecies to caMOD |  | 3d | 2010-10-15 | 2010-10-20 | 26 | 0d |  | Sima | 24h |
| 28 | 1.3.18 | 19876 - Therapy search results page is getting too long |  | 3d | 2010-10-20 | 2010-10-25 | 27 | 0d |  | Sima | 24h |
| 29 | 1.3.19 | 18439 - Validation script for external links needed |  | 1d | 2010-10-25 | 2010-10-26 | 28 | 0d |  | Sima | 8h |
| 30 | 1.3.20 | 18058 - Rename submitMicroarrayData.jsp to match all other formats |  | 1d | 2010-10-26 | 2010-10-27 | 29 | 0d |  | Sima | 8h |
| 31 | 1.3.21 | 24472 - bring search for induced mutation back |  | 3d | 2010-10-27 | 2010-11-01 | 30 | 0d |  | Sima | 24h |
| 32 | 1.3.22 | 14352 - Add search for models with cell lines to the TOC |  | 2d | 2010-11-01 | 2010-11-03 | 31 | 0d |  | Sima | 16h |
| 33 | 1.3.23 | 6848 - Letting a user add and view staining methods that are not part of the vocabulary; affects old and new entries |  | 4d | 2010-11-03 | 2010-11-09 | 32 | 0d |  | Sima | 32h |
| 34 | 1.3.24 | 23691 - Setting model to &quot;inactive&quot; does not work - fix inactive |  | 4d | 2010-11-09 | 2010-11-16 | 33 | 0d |  | Sima | 32h |
| 35 | 1.3.25 | 21113 - Customized search for Transplantation Donor Species not working for records with strain_id |  | 3d | 2010-11-16 | 2010-11-19 | 34 | 0d |  | Sima | 24h |
| 36 | 1.3.26 | 24931 - Upgrade Duplicate method to use Java BeanUtils |  | 10d | 2010-11-19 | 2010-12-06 | 35 | 0d |  | Sima | 80h |
| 37 | 1.3.27 | 20594 - Duplication does not work when record has histolopathology data |  | 1d | 2010-12-06 | 2010-12-07 | 36 | 0d |  | Sima | 8h |
| 38 | 1.3.28 | 19974 - Duplicate models feature creates new entries in look up table transient interference method |  | 1d | 2010-12-07 | 2010-12-08 | 37 | 0d |  | Sima | 8h |
| 39 | 1.3.29 | 8400 - Duplication does not work for some fields - re-engineer entier duplicate method with newer technology |  | 1d | 2010-12-08 | 2010-12-09 | 38 | 0d |  | Sima | 8h |
| 40 | 1.3.30 | 5200 -Duplicate Model - status of duplicated model should be default be "complete" |  | 1d | 2010-12-09 | 2010-12-10 | 39 | 0d |  | Sima | 8h |
| 41 | 1.3.31 | 5222 - Duplicate Model- Can not duplicate models with TransientInterferenceMethod data |  | 1d | 2010-12-10 | 2010-12-13 | 40 | 0d |  | Sima | 8h |
| 42 | 1.3.32 | 5007 - Unable to duplicate record (id 10001939) |  | 1d | 2010-12-13 | 2010-12-14 | 41 | 0d |  | Sima | 8h |
| 43 | 1.3.33 | TBD - SuperUser should be allowed to duplicate a model from the administration section |  | 1d | 2010-12-14 | 2010-12-15 | 42 | 0d |  | Sima | 8h |
| 44 | 1.3.34 | 19109 - SuperUser should be allowed to duplicate a model from the administration section |  | 2d | 2010-12-15 | 2010-12-17 | 43 | 0d |  | Sima | 16h |
| 45 | 1.3.35 | 17907 - Error editing cell line page for species without controlled anatomy vocabs |  | 3d | 2010-12-17 | 2010-12-22 | 44 | 0d |  | Sima | 24h |
| 46 | 1.3.36 | 9126 - value of organ field not shown on histopathology submission page - validation issue |  | 1d | 2010-12-22 | 2010-12-23 | 45 | 0d |  | Sima | 8h |
| 47 | 1.3.37 | 9125 - blank histopathology submission for species without vocabularies possible - write new validation code |  | 3d | 2010-12-23 | 2010-12-29 | 46 | 0d |  | Sima | 24h |
| 48 | 1.3.38 | 6743 - Admin - Can not Inactivate models (Incomplete state) on 2nd page of Edit Models screen - Fix inactivate |  | 3d | 2010-12-29 | 2011-01-04 | 47 | 0d |  | Sima | 24h |
| 49 | 1.3.39 | 6408 - Admin Bug - Moving Incomplete models to Inactivate throws error |  | 2d | 2011-01-04 | 2011-01-06 | 48 | 0d |  | Sima | 16h |
| 50 | 1.3.40 | 6745 - Synchronize the submitOverview code to send parameters within the link like the admin section does |  | 3d | 2011-01-06 | 2011-01-11 | 49 | 0d |  | Sima | 24h |
| 51 | 1.3.41 | 14379 - Synchronize the submitOverview code to send parameters within the link like the admin section does |  | 4d | 2011-01-11 | 2011-01-17 | 50 | 0d |  | Sima | 32h |
| 52 | 1.3.42 | 24816 - GeneIdentifier class was renamed to Gene to comply with Standard CDE |  | 3d | 2011-01-17 | 2011-01-20 | 51 | 0d |  | Sima | 24h |
| 53 | 1.3.43 | 24817 - jaxJNumber attribute in Publication class was renamed to jaxPubId |  | 2d | 2011-01-20 | 2011-01-24 | 52 | 0d |  | Sima | 16h |
| 54 | 1.3.44 | 24818 - Attribute expressionLevel in ExpressionLevelDescription changed to "name" |  | 2d | 2011-01-24 | 2011-01-26 | 53 | 0d |  | Sima | 16h |
| 55 | 1.3.45 | 24819 - Attribute expressionLevel in ExpressionLevelDescription changed to "name" |  | 1d | 2011-01-26 | 2011-01-27 | 54 | 0d |  | Sima | 8h |
| 56 | 1.3.46 | 24820 - Changed data type for endPage and startPage from long to string |  | 1d | 2011-01-27 | 2011-01-28 | 55 | 0d |  | Sima | 8h |
| 57 | 1.3.47 | 24821 - Move the comments attribute from sub class AnimalModel to superclass AbstractCancerModel |  | 2d | 2011-01-28 | 2011-02-01 | 56 | 0d |  | Sima | 16h |
| 58 | 1.3.48 | 24843 - Add drug vocabulary to therapy page |  | 3d | 2011-02-01 | 2011-02-04 | 57 | 0d |  | Sima | 24h |
| 59 | 1.3.49 | 24844 - Add mouse strain vocabulary to model characteristics page |  | 3d | 2011-02-04 | 2011-02-09 | 58 | 0d |  | Sima | 24h |
| 60 | 1.3.50 | 24845 - Add rat strain vocabulary to model characteristics page |  | 3d | 2011-02-09 | 2011-02-14 | 59 | 0d |  | Sima | 24h |

| ID | WBS | Task | Type | Duration | Start | Finish | Predecessors | Total slack | Free slack | Constraint | Resources | Work |
| --- | --- | --- | --- | --- | --- | --- | --- | --- | --- | --- | --- | --- |
| 61 | 1.3.51 | **Testing** |  | 21d | 2011-02-14 | 2011-03-15 | 60 | 0d |  |  |  | 264h |
| 62 | 1.3.51.1 | Update test cases |  | 9d | 2011-02-14 | 2011-02-25 |  | 0d |  |  | Sima; Ulli | 88h |
| 63 | 1.3.51.2 | Deploy iteration on DEV Server |  | 2d | 2011-02-25 | 2011-03-01 | 62 | 0d |  |  | Sima | 16h |
| 64 | 1.3.51.3 | Test on DEV tier |  | 10d | 2011-03-01 | 2011-03-15 | 63 | 0d |  |  | Sima; Ulli | 160h |
| 65 | 1.3.52 | Milestone: Construction Completed | milestone | 0d | 2011-03-15 | 2011-03-15 | 61 | 0d |  |  |  |  |
| 66 | 1.4 | **Transition Phase** |  | 32d | 2011-03-15 | 2011-04-28 | 10 | 0d |  |  |  | 444h |
| 67 | 1.4.1 | **QA** |  | 13d | 2011-03-15 | 2011-04-01 |  | 0d |  |  |  | 104h |
| 68 | 1.4.1.1 | Finalize Testplan |  | 10d | 2011-03-15 | 2011-03-29 |  | 0d |  | start no earlier than 2009-09-01 | QA | 80h |
| 69 | 1.4.1.2 | Finalize Test Cases |  | 3d | 2011-03-29 | 2011-04-01 | 68 | 0d |  |  | QA | 24h |
| 70 | 1.4.2 | **Deploy** |  | 32d | 2011-03-15 | 2011-04-28 |  | 0d |  |  |  | 228h |
| 71 | 1.4.2.1 | **QA Server Deployment** |  | 18d | 2011-03-15 | 2011-04-08 | 65 | 0d |  |  |  | 44h |
| 72 | 1.4.2.1.1 | QA Deploy |  | 0.5d | 2011-03-15 | 2011-03-15 |  | 12.5d |  |  | Sima | 4h |
| 73 | 1.4.2.1.2 | QA Testing |  | 5d | 2011-04-01 | 2011-04-08 | 65, 69, 72 | 0d |  |  | QA | 40h |
| 74 | 1.4.2.1.3 | Milestone: QA Testing Completed | milestone | 0d | 2011-04-08 | 2011-04-08 | 73 | 0d |  |  |  |  |
| 75 | 1.4.2.2 | **Staging Server Deployment** |  | 10d | 2011-04-08 | 2011-04-22 |  | 0d |  |  |  | 136h |
| 76 | 1.4.2.2.1 | Stage Deploy |  | 2d | 2011-04-08 | 2011-04-12 | 74 | 3d | 0d |  | Sima | 16h |
| 77 | 1.4.2.2.2 | Stage Testing |  | 5d | 2011-04-12 | 2011-04-19 | 76 | 3d |  |  | QA | 40h |
| 78 | 1.4.2.2.3 | App scan on Stage |  | 10d | 2011-04-08 | 2011-04-22 | 74 | 0d |  |  | Security Team | 80h |
| 79 | 1.4.2.2.4 | Milestone: Stage Testing Completed | milestone | 0d | 2011-04-22 | 2011-04-22 | 78, 77 | 0d |  |  |  |  |
| 80 | 1.4.2.3 | **Production Server Deployment** |  | 4d | 2011-04-22 | 2011-04-28 |  | 0d |  |  |  | 48h |
| 81 | 1.4.2.3.1 | Production server deployment |  | 2d | 2011-04-22 | 2011-04-26 | 79 | 0d |  |  | Systems | 16h |
| 82 | 1.4.2.3.2 | Production Verification |  | 2d | 2011-04-26 | 2011-04-28 | 81 | 0d |  |  | Sima; Ulli | 32h |
| 83 | 1.4.3 | **Documentation** |  | 5d | 2011-04-01 | 2011-04-08 |  | 14d |  |  |  | 40h |
| 84 | 1.4.3.1 | Documentation Edit by Documentation Team |  | 5d | 2011-04-01 | 2011-04-08 | 67 | 14d |  |  | Jill | 40h |

| ID | WBS | Task | Type | Duration | Start | Finish | Predecessors | Total slack | Resources | Work |
| --- | --- | --- | --- | --- | --- | --- | --- | --- | --- | --- |
| 85 | 1.4.4 | **Content Page Update** |  | 3d | 2011-04-22 | 2011-04-27 |  | 1d |  | 72h |
| 86 | 1.4.4.1 | zope site update |  | 3d | 2011-04-22 | 2011-04-27 | 75 | 1d | Maki; Ulli | 48h |
| 87 | 1.4.4.2 | gForge download site update |  | 3d | 2011-04-22 | 2011-04-27 | 75 | 1d | Sima | 24h |
| 88 | 2 | caMOD 2.7.0 - Closeout | milestone | 0d | 2011-04-28 | 2011-04-28 | 66 | 0d |  |  |
